# Projeto do centro de convenções

How a schedule from MS Project changed from version to version. A marks actual dates.

## Version 1 (saved 2017-08-30, file 05_03 Marcos.mpp)

| ID | WBS | Task | Duration | Start | Finish | Predecessors | Complete | Total float |
| --- | --- | --- | --- | --- | --- | --- | --- | --- |
| 1 |  | Iniciar projeto | 0d | 2016-10-03 | 2016-10-03 |  |  | 107d |
| 2 | 2 | **Atualizar o centro de convenções** | 107d | 2016-10-03 A | 2017-02-28 |  | 33% | 0d |
| 3 | 2.1 | **Atualizar a tecnologia do centro de convenções** | 107d | 2016-10-03 A | 2017-02-28 |  | 64% | 0d |
| 4 |  | Especificar requisitos | 2w | 2016-10-03 A | 2016-10-14 A | 1 | 100% |  |
| 5 | 2.1.2 | **Contrato com fornecedores** | 20d | 2016-10-17 A | 2016-11-11 A |  | 100% |  |
| 6 |  | Obter propostas | 2w | 2016-10-17 A | 2016-10-28 A | 4 | 100% |  |
| 7 |  | Selecionar fornecedor | 5d | 2016-10-31 A | 2016-11-04 A | 6 | 100% |  |
| 8 |  | Negociar | 4d | 2016-11-07 A | 2016-11-10 A | 7 | 100% |  |
| 9 |  | Assinar contratos | 1d | 2016-11-11 A | 2016-11-11 A | 8 | 100% |  |
| 10 |  | Projetar modernização | 1w | 2016-11-14 A | 2016-11-18 A | 9 | 100% |  |
| 11 |  | Design do centro de convenções concluído | 0d | 2016-11-18 A | 2016-11-18 A | 10 | 100% |  |
| 12 | 2.1.5 | **Instalar tecnologia** | 20d | 2017-02-01 | 2017-02-28 |  |  | 0d |
| 13 |  | Instalar cabos | 1w | 2017-02-01 | 2017-02-07 | 10, 23 |  | 0d |
| 14 |  | Configurar racks de equipamentos | 2d | 2017-02-08 | 2017-02-09 | 13 |  | 0d |
| 15 |  | Instalar equipamentos | 3d | 2017-02-10 | 2017-02-14 | 14 |  | 0d |
| 16 |  | Configurar equipamentos | 4d | 2017-02-15 | 2017-02-20 | 15 |  | 0d |
| 17 |  | Conectar à rede | 3d | 2017-02-21 | 2017-02-23 | 16 |  | 0d |
| 18 |  | Teste | 3d | 2017-02-24 | 2017-02-28 | 17 |  | 0d |
| 19 |  | Tecnologia instalada | 0d | 2017-02-28 | 2017-02-28 | 18 |  | 0d |
| 20 | 2.3 | **Remodelar espaços** | 52d | 2016-11-21 | 2017-01-31 |  |  | 0d |
| 21 |  | Projetar espaços | 4w | 2016-11-21 | 2016-12-16 | 10 |  | 0d |
| 22 |  | Construção | 6w | 2016-12-19 | 2017-01-27 | 21 |  | 0d |
| 23 |  | Concluir passo-a-passo | 2d | 2017-01-30 | 2017-01-31 | 22 |  | 0d |
| 24 | 3 | **Modernizar a tecnologia dos quartos do hotel** | 107d | 2016-10-03 | 2017-02-28 |  |  | 0d |
| 25 |  | Especificar requisitos | 2w | 2016-10-03 | 2016-10-14 | 4SS |  | 42d |
| 26 |  | Contrato com fornecedor | 4w | 2016-10-17 | 2016-11-11 | 25 |  | 42d |
| 27 |  | Projetar modernização | 1w | 2016-11-14 | 2016-11-18 | 26 |  | 42d |
| 28 |  | Instalar tecnologia | 6w | 2016-11-21 | 2016-12-30 | 27 |  | 42d |
| 29 |  | Projeto concluído | 0d | 2017-02-28 | 2017-02-28 | 28, 18 |  | 0d |

## Version 2 (saved 2017-08-30, file 05_05 Caminho crítico.mpp)

Last finish 2017-02-28 → 2017-02-22 (-6d). Complete tasks 7 → 0.

Changed:

| ID | Task | Start | Finish | Duration | Complete | Total float | Other |
| --- | --- | --- | --- | --- | --- | --- | --- |
| 2 | **Atualizar o centro de convenções** | 2016-10-03 A → 2016-10-03 | 2017-02-28 → 2017-02-22 (-6d) | 107d → 103d | 33% → 0% |  |  |
| 3 | **Atualizar a tecnologia do centro de convenções** | 2016-10-03 A → 2016-10-03 | 2017-02-28 → 2017-02-22 (-6d) | 107d → 103d | 64% → 0% |  |  |
| 4 | Especificar requisitos | 2016-10-03 A → 2016-10-03 | 2016-10-14 A → 2016-10-14 |  | 100% → 0% | none → 0d | resources none → IT Lead [25%] |
| 5 | **Contrato com fornecedores** | 2016-10-17 A → 2016-10-17 | 2016-11-11 A → 2016-11-07 (-4d) | 20d → 16d | 100% → 0% | none → 0d |  |
| 6 | Obter propostas | 2016-10-17 A → 2016-10-17 | 2016-10-28 A → 2016-10-21 (-7d) | 2w → 1w | 100% → 0% | none → 0d | resources none → Conf Ctr Director [5%] |
| 7 | Selecionar fornecedor | 2016-10-31 A → 2016-10-24 (-7d) | 2016-11-04 A → 2016-10-28 (-7d) |  | 100% → 0% | none → 0d | resources none → Conf Ctr Director [5%] |
| 8 | Negociar | 2016-11-07 A → 2016-10-31 (-7d) | 2016-11-10 A → 2016-11-04 (-6d) | 4d → 5d | 100% → 0% | none → 0d | resources none → Conf Ctr Director [10%] |
| 9 | Assinar contratos | 2016-11-11 A → 2016-11-07 (-4d) | 2016-11-11 A → 2016-11-07 (-4d) |  | 100% → 0% | none → 0d |  |
| 10 | Projetar modernização | 2016-11-14 A → 2016-11-08 (-6d) | 2016-11-18 A → 2016-11-14 (-4d) |  | 100% → 0% | none → 0d | resources none → IT Contractor [75%] |
| 11 | Design do centro de convenções concluído | 2016-11-18 A → 2016-11-14 (-4d) | 2016-11-18 A → 2016-11-14 (-4d) |  | 100% → 0% | none → 72d |  |
| 12 | **Instalar tecnologia** | 2017-02-01 → 2017-01-26 (-6d) | 2017-02-28 → 2017-02-22 (-6d) |  |  |  |  |
| 13 | Instalar cabos | 2017-02-01 → 2017-01-26 (-6d) | 2017-02-07 → 2017-02-01 (-6d) |  |  |  | resources none → IT Contractor [500%] |
| 14 | Configurar racks de equipamentos | 2017-02-08 → 2017-02-02 (-6d) | 2017-02-09 → 2017-02-03 (-6d) |  |  |  | resources none → IT Contractor [500%]; Equipment [0.1%] |
| 15 | Instalar equipamentos | 2017-02-10 → 2017-02-06 (-4d) | 2017-02-14 → 2017-02-08 (-6d) |  |  |  | resources none → IT Contractor [500%]; Equipment [0.1%] |
| 16 | Configurar equipamentos | 2017-02-15 → 2017-02-09 (-6d) | 2017-02-20 → 2017-02-14 (-6d) |  |  |  | resources none → IT Contractor [500%] |
| 17 | Conectar à rede | 2017-02-21 → 2017-02-15 (-6d) | 2017-02-23 → 2017-02-17 (-6d) |  |  |  | resources none → IT Contractor [500%] |
| 18 | Teste | 2017-02-24 → 2017-02-20 (-4d) | 2017-02-28 → 2017-02-22 (-6d) |  |  |  | resources none → IT Contractor [500%]; IT Lead |
| 19 | Tecnologia instalada | 2017-02-28 → 2017-02-22 (-6d) | 2017-02-28 → 2017-02-22 (-6d) |  |  |  |  |
| 20 | **Remodelar espaços** | 2016-11-21 → 2016-11-15 (-6d) | 2017-01-31 → 2017-01-25 (-6d) |  |  |  |  |
| 21 | Design spaces | 2016-11-21 → 2016-11-15 (-6d) | 2016-12-16 → 2016-12-12 (-4d) |  |  |  | was named Projetar espaços; resources none → Designer [75%] |
| 22 | Construct | 2016-12-19 → 2016-12-13 (-6d) | 2017-01-27 → 2017-01-23 (-4d) |  |  |  | was named Construção; resources none → Construction Team [800%] |
| 23 | Complete walkthrough | 2017-01-30 → 2017-01-24 (-6d) | 2017-01-31 → 2017-01-25 (-6d) |  |  |  | was named Concluir passo-a-passo; resources none → Conf Ctr Director |
| 24 | **Modernizar a tecnologia dos quartos do hotel** |  | 2017-02-28 → 2017-02-22 (-6d) | 107d → 103d |  |  |  |
| 25 | Especificar requisitos |  |  |  |  | 42d → 38d | resources none → Conf Ctr Director [20%] |
| 26 | Contrato com fornecedor |  |  |  |  | 42d → 38d | resources none → Conf Ctr Director [2.5%] |
| 27 | Projetar modernização |  |  |  |  | 42d → 38d | resources none → IT Contractor [75%] |
| 28 | Instalar tecnologia |  |  |  |  | 42d → 38d | resources none → IT Contractor [500%]; Equipment [0.1%] |
| 29 | Projeto concluído | 2017-02-28 → 2017-02-22 (-6d) | 2017-02-28 → 2017-02-22 (-6d) |  |  |  |  |
