# Projeto do centro de convenções

How a schedule from MS Project changed from version to version. A marks actual dates.

## Version 1 (saved 2017-08-30, file 08_03 Progresso.mpp)

| ID | WBS | Task | Duration | Start | Finish | Predecessors | Complete | Total float |
| --- | --- | --- | --- | --- | --- | --- | --- | --- |
| 1 |  | Iniciar projeto | 0d | 2016-10-03 | 2016-10-03 |  |  | 183d |
| 2 | 2 | **Atualizar o centro de convenções** | 183d | 2016-10-03 A | 2017-06-14 |  | 60% | 0d |
| 3 | 2.1 | **Atualizar a tecnologia do centro de convenções** | 183d | 2016-10-03 A | 2017-06-14 |  | 89% | 0d |
| 4 |  | Especificar requisitos | 2w | 2016-10-03 A | 2016-10-14 A | 1 | 100% |  |
| 5 | 2.1.2 | **Contrato com fornecedores** | 20d | 2016-10-17 A | 2016-11-11 A |  | 100% |  |
| 6 |  | Obter propostas | 1w | 2016-10-17 A | 2016-10-21 A | 4 | 100% |  |
| 7 |  | Selecionar fornecedor | 5d | 2016-10-24 A | 2016-10-28 A | 6 | 100% |  |
| 8 |  | Negociar | 9d | 2016-10-31 A | 2016-11-10 A | 7 | 100% |  |
| 9 |  | Assinar contratos | 1d | 2016-11-11 A | 2016-11-11 A | 8 | 100% |  |
| 10 |  | Projetar modernização | 1w | 2016-11-14 A | 2016-11-18 A | 9 | 100% |  |
| 11 |  | Design do centro de convenções concluído | 0d | 2016-11-18 A | 2016-11-18 A | 10 | 100% |  |
| 12 | 2.1.5 | **Instalar tecnologia** | 96d | 2017-02-01 A | 2017-06-14 |  | 84% | 0d |
| 13 |  | Instalar cabos | 10.8w | 2017-02-01 A | 2017-06-14 A | 10, 23 | 100% |  |
| 14 |  | Configurar racks de equipamentos | 2d | 2017-02-07 A | 2017-02-08 A | 13 | 100% |  |
| 15 |  | Instalar equipamentos | 2.5d | 2017-02-09 A | 2017-02-13 A | 14 | 100% |  |
| 16 |  | Configurar equipamentos | 3d | 2017-02-14 | 2017-02-16 | 15 |  | 76d |
| 17 |  | Conectar à rede | 3d | 2017-02-17 | 2017-02-21 | 16 |  | 76d |
| 18 |  | Teste | 5d | 2017-02-22 | 2017-02-28 | 17 |  | 76d |
| 19 |  | Tecnologia instalada | 0d | 2017-02-28 | 2017-02-28 | 18 |  | 76d |
| 20 | 2.3 | **Remodelar espaços** | 52d | 2016-11-21 | 2017-01-31 |  |  | 96d |
| 21 |  | Projetar espaços | 4w | 2016-11-21 | 2016-12-16 | 10 |  | 96d |
| 22 |  | Construir | 6w | 2016-12-19 | 2017-01-27 | 21 |  | 96d |
| 23 |  | Concluir passo-a-passo | 2d | 2017-01-30 | 2017-01-31 | 22 |  | 96d |
| 24 | 3 | **Modernizar tecnologia dos quartos do hotel** | 65d | 2016-10-03 | 2016-12-30 |  |  | 118d |
| 25 |  | Especificar requisitos | 2w | 2016-10-03 | 2016-10-14 | 4SS |  | 118d |
| 26 |  | Contrato com fornecedor | 4w | 2016-10-17 | 2016-11-11 | 25 |  | 118d |
| 27 |  | Projetar modernização | 1w | 2016-11-14 | 2016-11-18 | 26 |  | 118d |
| 28 |  | Instalar tecnologia | 6w | 2016-11-21 | 2016-12-30 | 27 |  | 118d |
| 29 |  | Projeto concluído | 0d | 2017-02-28 | 2017-02-28 | 28, 18 |  | 76d |

## Version 2 (saved 2017-08-30, file 08_03 Plano de base.mpp)

Last finish 2017-06-14 → 2017-02-23 (-111d). Complete tasks 10 → 1.

Changed:

| ID | Task | Start | Finish | Duration | Complete | Total float | Other |
| --- | --- | --- | --- | --- | --- | --- | --- |
| 2 | **Atualizar o centro de convenções** |  | 2017-06-14 → 2017-02-23 (-111d) | 183d → 104d | 60% → 0% |  |  |
| 3 | **Atualizar a tecnologia do centro de convenções** |  | 2017-06-14 → 2017-02-23 (-111d) | 183d → 104d | 89% → 0% |  |  |
| 4 | Especificar requisitos | 2016-10-03 A → 2016-10-03 | 2016-10-14 A → 2016-10-14 |  | 100% → 0% | none → 0d |  |
| 5 | **Contrato com fornecedor** | 2016-10-17 A → 2016-10-17 | 2016-11-11 A → 2016-11-03 (-8d) | 20d → 14d | 100% → 0% | none → 0d | was named Contrato com fornecedores |
| 6 | Obter propostas | 2016-10-17 A → 2016-10-17 | 2016-10-21 A → 2016-10-21 |  | 100% → 0% | none → 0d |  |
| 7 | Escolher fornecedores | 2016-10-24 A → 2016-10-24 | 2016-10-28 A → 2016-10-26 (-2d) | 5d → 3d | 100% → 0% | none → 0d | was named Selecionar fornecedor |
| 8 | Negociar | 2016-10-31 A → 2016-10-27 (-4d) | 2016-11-10 A → 2016-11-02 (-8d) | 9d → 5d | 100% → 0% | none → 0d |  |
| 9 | Assinar contratos | 2016-11-11 A → 2016-11-03 (-8d) | 2016-11-11 A → 2016-11-03 (-8d) |  | 100% → 0% | none → 0d |  |
| 10 | Projetar modernização | 2016-11-14 A → 2016-11-04 (-10d) | 2016-11-18 A → 2016-11-10 (-8d) |  | 100% → 0% | none → 0d |  |
| 11 | Design do centro de convenções concluído | 2016-11-18 A → 2016-11-10 A (-8d) | 2016-11-18 A → 2016-11-10 A (-8d) |  |  |  |  |
| 12 | **Instalar tecnologia** | 2017-02-01 A → 2017-01-24 (-8d) | 2017-06-14 → 2017-02-23 (-111d) | 96d → 23d | 84% → 0% |  |  |
| 13 | Instalar cabos | 2017-02-01 A → 2017-01-24 (-8d) | 2017-06-14 A → 2017-01-30 (-135d) | 10.8w → 1w | 100% → 0% | none → 0d |  |
| 14 | Configurar racks de equipamentos | 2017-02-07 A → 2017-01-31 (-7d) | 2017-02-08 A → 2017-02-03 (-5d) | 2d → 4d | 100% → 0% | none → 0d |  |
| 15 | Instalar equipamentos | 2017-02-09 A → 2017-02-06 (-3d) | 2017-02-13 A → 2017-02-08 (-5d) | 2.5d → 3d | 100% → 0% | none → 0d |  |
| 16 | Configurar equipamentos | 2017-02-14 → 2017-02-09 (-5d) | 2017-02-16 → 2017-02-13 (-3d) |  |  | 76d → 0d |  |
| 17 | Conectar à rede | 2017-02-17 → 2017-02-14 (-3d) | 2017-02-21 → 2017-02-16 (-5d) |  |  | 76d → 0d |  |
| 18 | Teste | 2017-02-22 → 2017-02-17 (-5d) | 2017-02-28 → 2017-02-23 (-5d) |  |  | 76d → 0d |  |
| 19 | Tecnologia instalada | 2017-02-28 → 2017-02-23 (-5d) | 2017-02-28 → 2017-02-23 (-5d) |  |  | 76d → 0d |  |
| 20 | **Remodelar espaços** | 2016-11-21 → 2016-11-11 (-10d) | 2017-01-31 → 2017-01-23 (-8d) |  |  | 96d → 0d |  |
| 21 | Projetar locais | 2016-11-21 → 2016-11-11 (-10d) | 2016-12-16 → 2016-12-08 (-8d) |  |  | 96d → 0d | was named Projetar espaços |
| 22 | Construção | 2016-12-19 → 2016-12-09 (-10d) | 2017-01-27 → 2017-01-19 (-8d) |  |  | 96d → 0d | was named Construir |
| 23 | Concluir passo-a-passo | 2017-01-30 → 2017-01-20 (-10d) | 2017-01-31 → 2017-01-23 (-8d) |  |  | 96d → 0d |  |
| 25 | Modernizar tecnologia dos quartos do hotel |  |  |  |  | 118d → 39d | was named Especificar requisitos |
| 29 | Projeto concluído | 2017-02-28 → 2017-02-23 (-5d) | 2017-02-28 → 2017-02-23 (-5d) |  |  | 76d → 0d |  |
